Schedule from MS Project XML, 2020-04-01 to 2023-05-19.

## Calendars

- Standard: Mon-Fri 08:00-12:00, 13:00-17:00; Sat-Sun off.

## Resources

| Resource |
| --- |
| John Barrett |
| Geoff Crew |
| Violet Pfeiffer |
| Dan Hoak |

## Schedule

| ID | WBS | Task | Type | Duration | Start | Finish | Predecessors |
| --- | --- | --- | --- | --- | --- | --- | --- |
| 1 | 1 | **Documentation** |  | 665d | 2020-11-02 | 2023-05-19 |  |
| 2 | 1.1 | Requirements list | manual | 22d | 2020-11-02 | 2020-12-01 |  |
| 3 | 1.2 | External review of requirements list | manual | 6d | 2020-12-02 | 2020-12-09 | 2 |
| 4 | 1.3 | Specification document | manual | 29d | 2020-12-10 | 2021-01-19 | 3 |
| 5 | 1.4 | External review of specification | manual | 1d | 2021-01-20 | 2021-01-20 | 4 |
| 6 | 1.5 | Help documentation - man pages | manual | 471d | 2021-07-30 | 2023-05-19 | 30 |
| 7 | 1.6 | Developer guide | manual | 471d | 2021-07-30 | 2023-05-19 | 30 |
| 8 | 1.7 | User guide | manual | 471d | 2021-07-30 | 2023-05-19 | 30 |
| 9 | 2 | **Code Developement** |  | 804d | 2020-04-01 | 2023-05-01 |  |
| 10 | 2.1 | **Create build system** |  | 15d | 2020-11-02 | 2020-11-20 |  |
| 11 | 2.1.1 | Create and evaluate automake build system | manual | 15d | 2020-11-02 | 2020-11-20 |  |
| 12 | 2.1.2 | Create and evaluate cmake build system | manual | 15d | 2020-11-02 | 2020-11-20 |  |
| 13 | 2.2 | **Import legacy software** |  | 45d | 2020-11-02 | 2021-01-01 |  |
| 14 | 2.2.1 | Import old libraries (e.g. mk4utils) | manual | 15d | 2020-11-02 | 2020-11-20 |  |
| 15 | 2.2.2 | Import and build old executables (fourfit, etc.) | manual | 15d | 2020-11-02 | 2020-11-20 |  |
| 16 | 2.2.3 | Import tests for legacy libraries/execuatables (e.g. fourfit) | manual | 30d | 2020-11-23 | 2021-01-01 | 14, 15 |
| 17 | 2.3 | **Develop new data container classes (DCC)** |  | 239d | 2020-04-01 | 2021-03-01 |  |
| 18 | 2.3.1 | Create data container class definitions | manual | 30d | 2020-11-02 | 2020-12-11 |  |
| 19 | 2.3.2 | Disk I/O library for DCC | manual | 30d | 2020-12-14 | 2021-01-22 | 18 |
| 20 | 2.3.3 | mk4 to new DCC conversion library | manual | 30d | 2020-12-14 | 2021-01-22 | 18 |
| 21 | 2.3.4 | mk4 to DCC conversion executable | manual | 26d | 2021-01-25 | 2021-03-01 | 20 |
| 22 | 2.3.5 | DiFX to DCC conversion executable | manual | 56d | 2020-12-14 | 2021-03-01 | 18 |
| 23 | 2.3.6 | I/O export utilities (HDF5,UVFITS,etc.) | manual | 1d | 2020-04-01 | 2020-04-01 |  |
| 24 | 2.4 | **Develop VLBI data analysis library and executables** |  | 561d | 2021-03-08 | 2023-05-01 | 17, 35, 39 |
| 25 | 2.4.1 | Demonstrate simple single-band-delay search | manual | 14d | 2021-03-08 | 2021-03-25 |  |
| 26 | 2.4.2 | Implement data flagging (time, freq, ad-hoc) | manual | 43d | 2021-03-08 | 2021-05-05 |  |
| 27 | 2.4.3 | Implement per-AP/per-channel phase/delay correction/calib. | manual | 44d | 2021-03-08 | 2021-05-06 |  |
| 28 | 2.4.4 | Implement per-AP/sub-channel phase/delay correction/cal. | manual | 160d | 2021-03-09 | 2021-10-18 |  |
| 29 | 2.4.5 | Implement per-AP/ad-hoc phase/delay correction/calib. | manual | 161d | 2021-03-08 | 2021-10-18 |  |
| 30 | 2.4.6 | Demonstrate single-baseline fringe fit with new data containters/operators | manual | 60d | 2021-05-07 | 2021-07-29 | 25, 27, 26 |
| 31 | 2.4.7 | Develop fourfit replacement | manual | 300d | 2021-07-30 | 2022-09-22 | 30 |
| 32 | 2.4.8 | Develop alist replacement | manual | 60d | 2021-07-30 | 2021-10-21 | 30 |
| 33 | 2.4.9 | Develop aedit replacement | manual | 240d | 2021-10-22 | 2022-09-22 | 32 |
| 34 | 2.4.10 | Experimental multi-baseline fringe-fit? | manual | 171d | 2022-09-05 | 2023-05-01 |  |

| ID | WBS | Task | Type | Duration | Start | Finish | Predecessors |
| --- | --- | --- | --- | --- | --- | --- | --- |
| 35 | 2.5 | **Develop utility libraries** |  | 90d | 2020-11-02 | 2021-03-05 |  |
| 36 | 2.5.1 | Develop messaging/logging utility | manual | 15d | 2020-11-02 | 2020-11-20 |  |
| 37 | 2.5.2 | Develop timer tool for profiling | manual | 15d | 2020-11-02 | 2020-11-20 |  |
| 38 | 2.5.3 | Develop math library (minimization, interpol., mx solve, etc.) | manual | 90d | 2020-11-02 | 2021-03-05 |  |
| 39 | 2.6 | **Develop data operator library** |  | 35d | 2020-12-14 | 2021-01-29 |  |
| 40 | 2.6.1 | Develop basic data operator class definitions | manual | 30d | 2020-12-14 | 2021-01-22 | 18 |
| 41 | 2.6.2 | Functor broadcast operator | manual | 5d | 2021-01-25 | 2021-01-29 | 40 |
| 42 | 2.6.3 | Array reduction operator | manual | 5d | 2021-01-25 | 2021-01-29 | 40 |
| 43 | 2.6.4 | Multidimensional FFT operator | manual | 5d | 2021-01-25 | 2021-01-29 | 40 |
| 44 | 2.7 | **Develop python bindings/libraries** |  | 494d | 2020-11-02 | 2022-09-22 |  |
| 45 | 2.7.1 | Develop python control layer for fringe fitting control | manual | 300d | 2021-07-30 | 2022-09-22 | 30, 46, 47 |
| 46 | 2.7.2 | python bindings to data operators | manual | 30d | 2021-02-01 | 2021-03-12 | 39 |
| 47 | 2.7.3 | Python bindings to DCC | manual | 30d | 2021-03-02 | 2021-04-12 | 17 |
| 48 | 2.7.4 | Develop python plotting utilities | manual | 120d | 2020-11-02 | 2021-04-16 |  |
| 49 | 2.8 | **Parallel acceleration** |  | 120d | 2022-09-23 | 2023-03-09 |  |
| 50 | 2.8.1 | Implement parallel data operators for TBD tasks | manual | 120d | 2022-09-23 | 2023-03-09 | 31 |
| 51 | 2.8.2 | Implement MPI executables for TBD tasks | manual | 120d | 2022-09-23 | 2023-03-09 | 31 |
| 52 | 3 | **Geodesy Specific Tasks** |  | 480d | 2021-03-02 | 2023-01-02 |  |
| 53 | 3.1 | Implement data containers for p-cal data | manual | 30d | 2021-03-02 | 2021-04-12 | 17 |
| 54 | 3.2 | Implement multi-tone p-cal correction | manual | 30d | 2021-04-13 | 2021-05-24 | 53 |
| 55 | 3.3 | Implement basic single-baseline dTEC search | manual | 120d | 2021-05-25 | 2021-11-08 | 54 |
| 56 | 3.4 | Implement multi-baseline dTEC search | manual | 120d | 2021-11-09 | 2022-04-25 | 55 |
| 57 | 3.5 | Source structure corrections? | manual | 300d | 2021-11-09 | 2023-01-02 | 55 |
